# 福莱特自研MES项目

How a schedule from a web Gantt chart changed from version to version. A marks actual dates.

## Version 1 (saved 2026-08-10)

| ID | WBS | Task | Duration | Start | Finish | Complete |
| --- | --- | --- | --- | --- | --- | --- |
| 2 |  | 项目启动会 | 1d | 2025-11-18 | 2025-11-18 | 100% |
| 3 | 2 | **调研** | 14d | 2025-11-18 | 2025-12-05 | 100% |
| 4 |  | 计划业务调研 | 1d | 2025-11-18 | 2025-11-18 | 100% |
| 5 |  | 原料工段调研 | 1d | 2025-11-19 | 2025-11-19 | 100% |
| 6 |  | 熔化工段调研 | 1d | 2025-11-19 | 2025-11-19 | 100% |
| 7 |  | 压延工段调研 | 1d | 2025-11-19 | 2025-11-19 | 100% |
| 8 |  | 收片工段调研 | 1d | 2025-11-20 | 2025-11-20 | 100% |
| 9 |  | 原片品管调研 | 1d | 2025-11-20 | 2025-11-20 | 100% |
| 10 |  | 仓库业务调研 | 1d | 2025-11-21 | 2025-11-21 | 100% |
| 11 |  | 加工流程业务调研 | 2d | 2025-11-25 | 2025-11-26 | 100% |
| 12 |  | 加工品质调研 | 1d | 2025-11-26 | 2025-11-26 | 100% |
| 13 |  | 机电业务调研 | 1d | 2025-11-27 | 2025-11-27 | 100% |
| 14 |  | 调研情况整理 | 9d | 2025-11-18 | 2025-11-28 | 100% |
| 15 |  | 调研报告输出 | 14d | 2025-11-18 | 2025-12-05 | 100% |
| 16 |  | 补充调研 | 3d | 2025-12-03 | 2025-12-05 | 100% |
| 17 | 3 | **蓝图设计方案输出** | 93d | 2025-12-03 | 2026-04-10 | 100% |
| 18 |  | 基础数据1 | 3d | 2025-12-03 | 2025-12-05 | 100% |
| 19 |  | 基础数据2 | 4d | 2025-12-15 | 2025-12-18 | 100% |
| 20 |  | 销售订单管理 | 3d | 2025-12-03 | 2025-12-05 | 100% |
| 21 |  | 计划排产 | 2d | 2025-12-08 | 2025-12-09 | 100% |
| 22 |  | 生产执行 | 3d | 2025-12-10 | 2025-12-12 | 100% |
| 23 |  | 生产过程记录表 | 3d | 2025-12-19 | 2025-12-23 | 100% |
| 24 |  | 品质执行 | 3d | 2025-12-15 | 2025-12-17 | 100% |
| 25 |  | 品质过程记录表 | 8d | 2025-12-10 | 2025-12-19 | 100% |
| 26 |  | 钢化成品抽检记录 | 2d | 2025-12-22 | 2025-12-23 | 100% |
| 27 |  | 生产数据生成 | 2d | 2025-12-18 | 2025-12-19 | 100% |
| 28 |  | SAP推送 | 2d | 2025-12-19 | 2025-12-22 | 100% |
| 29 |  | 仓库 | 1d | 2025-12-23 | 2025-12-23 | 100% |
| 30 |  | 内部整合讨论修改 | 6d | 2025-12-24 | 2025-12-31 | 100% |
| 31 | 3.14 | **追加需求设计** | 10d | 2026-03-30 | 2026-04-10 | 100% |
| 32 |  | 水电气汇报 | 5d | 2026-03-30 | 2026-04-03 | 100% |
| 33 |  | 品质填报重新设计 | 10d | 2026-03-30 | 2026-04-10 | 100% |
| 34 | 4 | **设计方案确认** | 49d | 2026-01-13 | 2026-03-20 | 100% |
| 35 | 4.1 | **安福业务部门确认** | 3d | 2026-01-13 | 2026-01-15 | 100% |
| 36 |  | 计划确认 | 1d | 2026-01-13 | 2026-01-13 | 100% |
| 37 |  | 加工确认 | 1d | 2026-01-13 | 2026-01-13 | 100% |
| 38 |  | 原料确认 | 1d | 2026-01-14 | 2026-01-14 | 100% |
| 39 |  | 压延确认 | 1d | 2026-01-14 | 2026-01-14 | 100% |
| 40 |  | 仓库确认 | 1d | 2026-01-14 | 2026-01-14 | 100% |
| 41 |  | 收片确认 | 1d | 2026-01-14 | 2026-01-14 | 100% |
| 42 |  | 品质确认 | 1d | 2026-01-15 | 2026-01-15 | 100% |
| 43 |  | 方案优化调整 | 4d | 2026-01-19 | 2026-01-22 | 100% |
| 44 |  | 财务需求确认 | 1d | 2026-01-21 | 2026-01-21 | 100% |
| 45 |  | 合格证沟通 | 1d | 2026-01-21 | 2026-01-21 | 100% |
| 46 |  | 销售图纸文件确认 | 3d | 2026-02-27 | 2026-03-03 | 100% |
| 47 |  | 方案业务签字确认 | 3d | 2026-03-18 | 2026-03-20 | 100% |
| 48 |  | 开发方案内部沟通 | 4d | 2026-01-27 | 2026-01-30 | 100% |
| 49 | 6 | **系统开发** | 84d | 2026-03-03 | 2026-06-26 | 100% |
| 50 | 6.1 | **建表** | 57d | 2026-03-03 | 2026-05-20 | 100% |
| 51 |  | 系统建表 | 9d | 2026-03-03 | 2026-03-13 | 100% |
| 52 |  | 品质填报建表 | 3d | 2026-05-18 | 2026-05-20 | 100% |
| 53 | 6.2 | **开发** | 74d | 2026-03-17 | 2026-06-26 | 100% |
| 54 |  | 技术架构 | 33d | 2026-03-17 | 2026-04-30 | 100% |
| 55 |  | 基础数据 | 50d | 2026-03-24 | 2026-06-01 | 100% |
| 56 |  | 销售订单管理 | 50d | 2026-03-24 | 2026-06-01 | 100% |
| 57 |  | 计划管理 | 15d | 2026-03-24 | 2026-04-13 | 100% |
| 58 |  | 生产管理 | 49d | 2026-03-24 | 2026-05-29 | 100% |
| 59 |  | 生产填报 | 18d | 2026-05-06 | 2026-05-29 | 100% |
| 60 |  | 品质管理 | 45d | 2026-03-30 | 2026-05-29 | 100% |
| 61 |  | 品质填报 | 15d | 2026-05-25 | 2026-06-12 | 100% |
| 62 |  | 生产结果 | 49d | 2026-03-24 | 2026-05-29 | 100% |
| 63 |  | 推送清单 | 35d | 2026-04-13 | 2026-05-29 | 100% |
| 64 |  | 库存管理 | 35d | 2026-04-13 | 2026-05-29 | 100% |
| 65 |  | 开发集成测试 | 20d | 2026-06-01 | 2026-06-26 | 100% |
| 66 | 7 | **UAT测试** | 35d | 2026-06-29 | 2026-08-14 | 70% |
| 67 |  | 单元模块、系统内测 | 35d | 2026-06-29 | 2026-08-14 | 70% |
| 68 |  | UAT问题跟进处理 | 35d | 2026-06-29 | 2026-08-14 | 70% |
| 69 | 8 | **培训** | 10d | 2026-08-17 | 2026-08-28 |  |
| 70 |  | 培训材料编写 | 5d | 2026-08-17 | 2026-08-21 |  |
| 71 |  | 系统动员会 | 1d | 2026-08-21 | 2026-08-21 |  |

| ID | WBS | Task | Duration | Start | Finish | Predecessors |
| --- | --- | --- | --- | --- | --- | --- |
| 72 |  | 系统培训 | 5d | 2026-08-24 | 2026-08-28 |  |
| 73 | 9 | **系统试运行** | 20d | 2026-08-17 | 2026-09-11 |  |
| 74 |  | 现场设备硬件确认 | 5d | 2026-08-24 | 2026-08-28 |  |
| 75 |  | 试运行环境搭建 | 5d | 2026-08-17 | 2026-08-21 |  |
| 76 |  | 试运行数据准备 | 10d | 2026-08-17 | 2026-08-28 |  |
| 77 |  | 系统试运行 | 10d | 2026-08-31 | 2026-09-11 |  |
| 78 |  | 功能优化 | 10d | 2026-08-31 | 2026-09-11 |  |
| 79 | 10 | **系统上线** | 40d | 2026-08-31 | 2026-10-23 |  |
| 80 |  | 正式环境部署 | 5d | 2026-08-31 | 2026-09-04 |  |
| 81 |  | 正式环境数据准备 | 5d | 2026-09-07 | 2026-09-11 | 80 |
| 82 |  | 正式上线 | 15d | 2026-09-14 | 2026-10-02 | 77 |
| 83 |  | 验收签字 | 15d | 2026-10-05 | 2026-10-23 | 82 |
| 84 | 11 | **南通** | 85d | 2026-09-21 | 2027-01-15 |  |
| 85 |  | 南通设备准备 | 35d | 2026-09-21 | 2026-11-06 |  |
| 86 | 11.2 | **系统试运行** | 30d | 2026-11-09 | 2026-12-18 |  |
| 87 |  | 现场设备硬件确认 | 5d | 2026-11-09 | 2026-11-13 |  |
| 88 |  | 试运行环境搭建 | 5d | 2026-11-09 | 2026-11-13 |  |
| 89 |  | 试运行数据准备 | 10d | 2026-11-09 | 2026-11-20 |  |
| 90 |  | 系统动员会 | 1d | 2026-11-20 | 2026-11-20 |  |
| 91 |  | 系统培训 | 5d | 2026-11-23 | 2026-11-27 | 89 |
| 92 |  | 系统试运行 | 15d | 2026-11-30 | 2026-12-18 | 91 |
| 93 |  | 系统针对性优化 | 15d | 2026-11-30 | 2026-12-18 |  |
| 94 | 11.3 | **正式上线** | 30d | 2026-12-07 | 2027-01-15 |  |
| 95 |  | 正式环境部署 | 5d | 2026-12-07 | 2026-12-11 |  |
| 96 |  | 正式环境数据准备 | 5d | 2026-12-14 | 2026-12-18 | 95 |
| 97 |  | 系统正式上线 | 20d | 2026-12-21 | 2027-01-15 | 92, 96 |
| 98 | 12 | **安福三期** | 75d | 2026-11-23 | 2027-03-05 |  |
| 99 |  | 三期设备准备 | 30d | 2026-11-23 | 2027-01-01 |  |
| 100 | 12.2 | **系统试运行** | 30d | 2027-01-04 | 2027-02-12 |  |
| 101 |  | 现场设备硬件确认 | 5d | 2027-01-04 | 2027-01-08 |  |
| 102 |  | 试运行环境搭建 | 5d | 2027-01-04 | 2027-01-08 |  |
| 103 |  | 试运行数据准备 | 5d | 2027-01-11 | 2027-01-15 | 102 |
| 104 |  | 系统动员会 | 1d | 2027-01-08 | 2027-01-08 |  |
| 105 |  | 系统培训 | 5d | 2027-01-11 | 2027-01-15 |  |
| 106 |  | 系统试运行 | 20d | 2027-01-18 | 2027-02-12 | 103, 105 |
| 107 |  | 系统针对性优化 | 20d | 2027-01-18 | 2027-02-12 |  |
| 108 | 12.3 | **系统正式上线** | 30d | 2027-01-25 | 2027-03-05 |  |
| 109 |  | 正式环境部署 | 5d | 2027-01-25 | 2027-01-29 |  |
| 110 |  | 正式环境数据准备 | 5d | 2027-02-01 | 2027-02-05 | 109 |
| 111 |  | 系统正式上线 | 15d | 2027-02-15 | 2027-03-05 | 106 |
| 112 | 13 | **越南** | 90d | 2026-12-28 | 2027-04-30 |  |
| 113 |  | 越南设备准备 | 30d | 2027-01-11 | 2027-02-19 |  |
| 114 |  | 越南版本准备 | 40d | 2026-12-28 | 2027-02-19 |  |
| 115 | 13.3 | **试运行** | 35d | 2027-02-22 | 2027-04-09 |  |
| 116 |  | 现场设备硬件确认 | 5d | 2027-02-22 | 2027-02-26 |  |
| 117 |  | 试运行环境搭建 | 5d | 2027-02-22 | 2027-02-26 |  |
| 118 |  | 试运行数据准备 | 5d | 2027-03-01 | 2027-03-05 | 117 |
| 119 |  | 系统动员会 | 1d | 2027-03-05 | 2027-03-05 |  |
| 120 |  | 系统培训 | 5d | 2027-03-08 | 2027-03-12 | 118, 119 |
| 121 |  | 系统试运行 | 20d | 2027-03-15 | 2027-04-09 | 120 |
| 122 |  | 系统针对性优化 | 20d | 2027-03-15 | 2027-04-09 |  |
| 123 | 13.4 | **系统上线** | 25d | 2027-03-29 | 2027-04-30 |  |
| 124 |  | 正式环境部署 | 5d | 2027-03-29 | 2027-04-02 |  |
| 125 |  | 正式环境数据准备 | 10d | 2027-03-29 | 2027-04-09 |  |
| 126 |  | 系统上线 | 15d | 2027-04-12 | 2027-04-30 |  |
| 127 |  | 安福二期 | 1d | 2027-05-10 | 2027-05-10 |  |

## Version 2 (saved 2026-08-26)

Last finish 2027-05-10 → 2026-10-23 (-199d).

Removed: 84 南通; 85 南通设备准备; 86 系统试运行; 87 现场设备硬件确认; 88 试运行环境搭建; 89 试运行数据准备; 90 系统动员会; 91 系统培训; 92 系统试运行; 93 系统针对性优化; 94 正式上线; 95 正式环境部署; 96 正式环境数据准备; 97 系统正式上线; 98 安福三期; 99 三期设备准备; 100 系统试运行; 101 现场设备硬件确认; 102 试运行环境搭建; 103 试运行数据准备; 104 系统动员会; 105 系统培训; 106 系统试运行; 107 系统针对性优化; 108 系统正式上线; 109 正式环境部署; 110 正式环境数据准备; 111 系统正式上线; 112 越南; 113 越南设备准备; 114 越南版本准备; 115 试运行; 116 现场设备硬件确认; 117 试运行环境搭建; 118 试运行数据准备; 119 系统动员会; 120 系统培训; 121 系统试运行; 122 系统针对性优化; 123 系统上线; 124 正式环境部署; 125 正式环境数据准备; 126 系统上线; 127 安福二期
