# 福莱特自研MES项目

How a schedule from a web Gantt chart changed from version to version. A marks actual dates.

## Version 1 (saved 2026-03-17)

| ID | WBS | Task | Duration | Start | Finish | Complete |
| --- | --- | --- | --- | --- | --- | --- |
| 2 |  | 项目启动会 | 1d | 2025-11-18 | 2025-11-18 | 100% |
| 3 | 2 | **调研** | 14d | 2025-11-18 | 2025-12-05 | 100% |
| 4 |  | 计划业务调研 | 1d | 2025-11-18 | 2025-11-18 | 100% |
| 5 |  | 原料工段调研 | 1d | 2025-11-19 | 2025-11-19 | 100% |
| 6 |  | 熔化工段调研 | 1d | 2025-11-19 | 2025-11-19 | 100% |
| 7 |  | 压延工段调研 | 1d | 2025-11-19 | 2025-11-19 | 100% |
| 8 |  | 收片工段调研 | 1d | 2025-11-20 | 2025-11-20 | 100% |
| 9 |  | 原片品管调研 | 1d | 2025-11-20 | 2025-11-20 | 100% |
| 10 |  | 仓库业务调研 | 1d | 2025-11-21 | 2025-11-21 | 100% |
| 11 |  | 加工流程业务调研 | 2d | 2025-11-25 | 2025-11-26 | 100% |
| 12 |  | 加工品质调研 | 1d | 2025-11-26 | 2025-11-26 | 100% |
| 13 |  | 机电业务调研 | 1d | 2025-11-27 | 2025-11-27 | 100% |
| 14 |  | 调研情况整理 | 9d | 2025-11-18 | 2025-11-28 | 100% |
| 15 |  | 调研报告输出 | 14d | 2025-11-18 | 2025-12-05 | 100% |
| 16 |  | 补充调研 | 3d | 2025-12-03 | 2025-12-05 | 100% |
| 17 | 3 | **蓝图设计方案输出** | 21d | 2025-12-03 | 2025-12-31 | 100% |
| 18 |  | 基础数据1 | 3d | 2025-12-03 | 2025-12-05 | 100% |
| 19 |  | 基础数据2 | 4d | 2025-12-15 | 2025-12-18 | 100% |
| 20 |  | 销售订单管理 | 3d | 2025-12-03 | 2025-12-05 | 100% |
| 21 |  | 计划排产 | 2d | 2025-12-08 | 2025-12-09 | 100% |
| 22 |  | 生产执行 | 3d | 2025-12-10 | 2025-12-12 | 100% |
| 23 |  | 生产过程记录表 | 3d | 2025-12-19 | 2025-12-23 | 100% |
| 24 |  | 品质执行 | 3d | 2025-12-15 | 2025-12-17 | 100% |
| 25 |  | 品质过程记录表 | 8d | 2025-12-10 | 2025-12-19 | 100% |
| 26 |  | 钢化成品抽检记录 | 2d | 2025-12-22 | 2025-12-23 | 100% |
| 27 |  | 生产数据生成 | 2d | 2025-12-18 | 2025-12-19 | 100% |
| 28 |  | SAP推送 | 2d | 2025-12-19 | 2025-12-22 | 100% |
| 29 |  | 仓库 | 1d | 2025-12-23 | 2025-12-23 | 100% |
| 30 |  | 内部整合讨论修改 | 6d | 2025-12-24 | 2025-12-31 | 100% |
| 31 | 4 | **设计方案确认** | 49d | 2026-01-13 | 2026-03-20 | 84% |
| 32 | 4.1 | **安福业务部门确认** | 3d | 2026-01-13 | 2026-01-15 | 100% |
| 33 |  | 计划确认 | 1d | 2026-01-13 | 2026-01-13 | 100% |
| 34 |  | 加工确认 | 1d | 2026-01-13 | 2026-01-13 | 100% |
| 35 |  | 原料确认 | 1d | 2026-01-14 | 2026-01-14 | 100% |
| 36 |  | 压延确认 | 1d | 2026-01-14 | 2026-01-14 | 100% |
| 37 |  | 仓库确认 | 1d | 2026-01-14 | 2026-01-14 | 100% |
| 38 |  | 收片确认 | 1d | 2026-01-14 | 2026-01-14 | 100% |
| 39 |  | 品质确认 | 1d | 2026-01-15 | 2026-01-15 | 100% |
| 40 |  | 方案优化调整 | 4d | 2026-01-19 | 2026-01-22 | 100% |
| 41 |  | 财务需求确认 | 1d | 2026-01-21 | 2026-01-21 | 100% |
| 42 |  | 合格证沟通 | 1d | 2026-01-21 | 2026-01-21 | 100% |
| 43 |  | 销售图纸文件确认 | 3d | 2026-02-27 | 2026-03-03 | 100% |
| 44 |  | 方案业务签字确认 | 3d | 2026-03-18 | 2026-03-20 |  |
| 45 |  | 开发方案内部沟通 | 4d | 2026-01-27 | 2026-01-30 | 100% |
| 46 | 6 | **系统开发** | 17d | 2026-03-03 | 2026-03-25 | 41% |
| 47 | 6.1 | **建表** | 17d | 2026-03-03 | 2026-03-25 | 75% |
| 48 |  | 系统建表 | 9d | 2026-03-03 | 2026-03-13 | 100% |
| 49 |  | 品质填报建表 | 3d | 2026-03-23 | 2026-03-25 |  |
| 50 | 6.2 | **开发** | 7d | 2026-03-13 | 2026-03-23 |  |
| 51 |  | 基础数据 | 1d | 2026-03-23 | 2026-03-23 |  |
| 52 |  | 销售订单管理 | 1d | 2026-03-23 | 2026-03-23 |  |
| 53 |  | 计划管理 | 1d | 2026-03-23 | 2026-03-23 |  |
| 54 |  | 生产管理 | 1d | 2026-03-23 | 2026-03-23 |  |
| 55 |  | 生产填报 | 1d | 2026-03-23 | 2026-03-23 |  |
| 56 |  | 品质管理 | 1d | 2026-03-13 | 2026-03-13 |  |
| 57 |  | 品质填报 | 1d | 2026-03-13 | 2026-03-13 |  |
| 58 |  | 生产结果 | 1d | 2026-03-13 | 2026-03-13 |  |
| 59 |  | 推送清单 | 1d | 2026-03-13 | 2026-03-13 |  |
| 60 |  | 库存管理 | 1d | 2026-03-13 | 2026-03-13 |  |
| 61 |  | 现场硬件设备准备 | 1d | 2026-03-13 | 2026-03-13 |  |
| 62 | 8 | **UAT测试** | 1d | 2026-03-13 | 2026-03-13 |  |
| 63 |  | 单元模块、系统内测 | 1d | 2026-03-13 | 2026-03-13 |  |
| 64 |  | 系统管理员培训、问题解答和技术支持 | 1d | 2026-03-13 | 2026-03-13 |  |
| 65 |  | UAT问题跟进处理 | 1d | 2026-03-13 | 2026-03-13 |  |
| 66 | 9 | **培训** | 1d | 2026-03-13 | 2026-03-13 |  |
| 67 |  | 培训材料编写 | 1d | 2026-03-13 | 2026-03-13 |  |
| 68 |  | 系统培训 | 1d | 2026-03-13 | 2026-03-13 |  |
| 69 | 10 | **系统试运行** | 1d | 2026-03-13 | 2026-03-13 |  |
| 70 |  | 现场设备硬件确认 | 1d | 2026-03-13 | 2026-03-13 |  |
| 71 |  | 试运行环境搭建 | 1d | 2026-03-13 | 2026-03-13 |  |

| ID | WBS | Task | Duration | Start | Finish |
| --- | --- | --- | --- | --- | --- |
| 72 |  | 试运行数据准备 | 1d | 2026-03-13 | 2026-03-13 |
| 73 |  | 系统上线试运行，试运行确认 | 1d | 2026-03-13 | 2026-03-13 |
| 74 |  | 功能优化 | 1d | 2026-03-13 | 2026-03-13 |
| 75 | 11 | **系统上线** | 1d | 2026-03-13 | 2026-03-13 |
| 76 |  | 正式投产上线 | 1d | 2026-03-13 | 2026-03-13 |
| 77 |  | 验收签字 | 1d | 2026-03-13 | 2026-03-13 |

## Version 2 (saved 2026-03-17)

Last finish 2026-03-25 → 2026-10-23 (+212d).

Added:

| ID | Task | Duration | Start | Finish | Predecessors |
| --- | --- | --- | --- | --- | --- |
| 73 | 系统试运行 | 20d | 2026-08-03 | 2026-08-28 | 68 |

Removed: 73 系统上线试运行，试运行确认

Changed:

| ID | Task | Start | Finish | Duration | Predecessors |
| --- | --- | --- | --- | --- | --- |
| 46 | **系统开发** |  | 2026-03-25 → 2026-06-30 (+97d) | 17d → 86d |  |
| 50 | **开发** | 2026-03-13 → 2026-03-23 (+10d) | 2026-03-23 → 2026-06-30 (+99d) | 7d → 72d |  |
| 56 | 品质管理 | 2026-03-13 → 2026-03-23 (+10d) | 2026-03-13 → 2026-03-23 (+10d) |  |  |
| 57 | 品质填报 | 2026-03-13 → 2026-03-23 (+10d) | 2026-03-13 → 2026-03-23 (+10d) |  |  |
| 58 | 生产结果 | 2026-03-13 → 2026-03-23 (+10d) | 2026-03-13 → 2026-03-23 (+10d) |  |  |
| 59 | 推送清单 | 2026-03-13 → 2026-03-23 (+10d) | 2026-03-13 → 2026-03-23 (+10d) |  |  |
| 60 | 库存管理 | 2026-03-13 → 2026-06-30 (+109d) | 2026-03-13 → 2026-06-30 (+109d) |  |  |
| 61 | 现场硬件设备准备 | 2026-03-13 → 2026-05-05 (+53d) | 2026-03-13 → 2026-07-10 (+119d) | 1d → 49d |  |
| 62 | **UAT测试** | 2026-03-13 → 2026-05-25 (+73d) | 2026-03-13 → 2026-07-17 (+126d) | 1d → 40d |  |
| 63 | 单元模块、系统内测 | 2026-03-13 → 2026-05-25 (+73d) | 2026-03-13 → 2026-07-17 (+126d) | 1d → 40d |  |
| 64 | 系统管理员培训、问题解答和技术支持 | 2026-03-13 → 2026-05-25 (+73d) | 2026-03-13 → 2026-05-25 (+73d) |  |  |
| 65 | UAT问题跟进处理 | 2026-03-13 → 2026-05-25 (+73d) | 2026-03-13 → 2026-07-17 (+126d) | 1d → 40d |  |
| 66 | **培训** | 2026-03-13 → 2026-07-13 (+122d) | 2026-03-13 → 2026-07-31 (+140d) | 1d → 15d |  |
| 67 | 培训材料编写 | 2026-03-13 → 2026-07-13 (+122d) | 2026-03-13 → 2026-07-24 (+133d) | 1d → 10d |  |
| 68 | 系统培训 | 2026-03-13 → 2026-07-27 (+136d) | 2026-03-13 → 2026-07-31 (+140d) | 1d → 5d | none → 67 |
| 69 | **系统试运行** | 2026-03-13 → 2026-07-13 (+122d) | 2026-03-13 → 2026-08-28 (+168d) | 1d → 35d |  |
| 70 | 现场设备硬件确认 | 2026-03-13 → 2026-07-13 (+122d) | 2026-03-13 → 2026-07-17 (+126d) | 1d → 5d |  |
| 71 | 试运行环境搭建 | 2026-03-13 → 2026-07-20 (+129d) | 2026-03-13 → 2026-07-24 (+133d) | 1d → 5d |  |
| 72 | 试运行数据准备 | 2026-03-13 → 2026-07-27 (+136d) | 2026-03-13 → 2026-07-31 (+140d) | 1d → 5d |  |
| 74 | 功能优化 | 2026-03-13 → 2026-08-03 (+143d) | 2026-03-13 → 2026-08-28 (+168d) | 1d → 20d |  |
| 75 | **系统上线** | 2026-03-13 → 2026-08-31 (+171d) | 2026-03-13 → 2026-10-23 (+224d) | 1d → 40d |  |
| 76 | 正式投产上线 | 2026-03-13 → 2026-08-31 (+171d) | 2026-03-13 → 2026-09-25 (+196d) | 1d → 20d | none → 73 |
| 77 | 验收签字 | 2026-03-13 → 2026-09-28 (+199d) | 2026-03-13 → 2026-10-23 (+224d) | 1d → 20d |  |

## Version 3 (saved 2026-03-18)

Last finish stays 2026-10-23.

Added:

| ID | Task | Duration | Start | Finish | Predecessors |
| --- | --- | --- | --- | --- | --- |
| 51 | 技术架构 | 33d | 2026-03-17 | 2026-04-30 |  |
| 77 | 正式上线 | 20d | 2026-08-31 | 2026-09-25 | 74 |

Removed: 76 正式投产上线

Changed:

| ID | Task | Start | Finish | Duration | Complete | Predecessors |
| --- | --- | --- | --- | --- | --- | --- |
| 46 | **系统开发** |  | 2026-06-30 → 2026-05-15 (-46d) | 86d → 54d | 41% → 5% |  |
| 50 | **开发** | 2026-03-23 → 2026-03-17 (-6d) | 2026-06-30 → 2026-05-15 (-46d) | 72d → 44d |  |  |
| 52 | 基础数据 | 2026-03-23 → 2026-03-24 (+1d) | 2026-03-23 → 2026-04-06 (+14d) | 1d → 10d |  |  |
| 53 | 销售订单管理 | 2026-03-23 → 2026-03-24 (+1d) | 2026-03-23 → 2026-04-13 (+21d) | 1d → 15d |  |  |
| 54 | 计划管理 | 2026-03-23 → 2026-03-24 (+1d) | 2026-03-23 → 2026-04-13 (+21d) | 1d → 15d |  |  |
| 55 | 生产管理 | 2026-03-23 → 2026-03-24 (+1d) | 2026-03-23 → 2026-04-30 (+38d) | 1d → 28d |  |  |
| 56 | 生产填报 | 2026-03-23 → 2026-05-06 (+44d) | 2026-03-23 → 2026-05-15 (+53d) | 1d → 8d |  |  |
| 57 | 品质管理 | 2026-03-23 → 2026-03-24 (+1d) | 2026-03-23 → 2026-04-30 (+38d) | 1d → 28d |  |  |
| 59 | 生产结果 | 2026-03-23 → 2026-03-24 (+1d) | 2026-03-23 → 2026-04-13 (+21d) | 1d → 15d |  |  |
| 60 | 推送清单 | 2026-03-23 → 2026-04-13 (+21d) | 2026-03-23 → 2026-04-27 (+35d) | 1d → 11d |  |  |
| 61 | 库存管理 | 2026-06-30 → 2026-04-13 (-78d) | 2026-06-30 → 2026-04-17 (-74d) | 1d → 5d |  |  |
| 63 | **UAT测试** | 2026-05-25 → 2026-05-18 (-7d) |  | 40d → 45d |  |  |
| 64 | 系统管理员培训、问题解答和技术支持 | 2026-05-25 → 2026-05-18 (-7d) | 2026-05-25 → 2026-05-18 (-7d) |  |  |  |
| 65 | 单元模块、系统内测 | 2026-05-25 → 2026-05-18 (-7d) | 2026-07-17 → 2026-07-10 (-7d) |  |  | none → 46 |

## Version 4 (saved 2026-03-23)

Last finish 2026-10-23 → 2026-10-30 (+7d). Complete tasks 40 → 42.

Added:

| ID | Task | Duration | Start | Finish |
| --- | --- | --- | --- | --- |
| 62 | 开发集成测试 | 20d | 2026-06-01 | 2026-06-26 |
| 63 | **打印服务** | 30d | 2026-03-16 | 2026-04-24 |
| 64 | 技术架构 | 5d | 2026-03-16 | 2026-03-20 |
| 65 | 业务视图管理 | 15d | 2026-03-23 | 2026-04-10 |
| 66 | 基础档案管理 | 3d | 2026-04-13 | 2026-04-15 |
| 67 | 模版管理中心 | 7d | 2026-04-16 | 2026-04-24 |
| 75 | 系统动员会 | 1d | 2026-08-03 | 2026-08-03 |
| 84 | 正式环境部署 | 5d | 2026-08-24 | 2026-08-28 |
| 85 | 正式环境数据准备 | 5d | 2026-08-31 | 2026-09-04 |

Changed:

| ID | Task | Start | Finish | Duration | Complete | Predecessors |
| --- | --- | --- | --- | --- | --- | --- |
| 31 | **设计方案确认** |  |  |  | 84% → 100% |  |
| 44 | 方案业务签字确认 |  |  |  | 0% → 100% |  |
| 46 | **系统开发** |  | 2026-05-15 → 2026-06-26 (+42d) | 54d → 84d | 5% → 6% |  |
| 47 | **建表** |  | 2026-03-25 → 2026-04-15 (+21d) | 17d → 32d |  |  |
| 49 | 品质填报建表 | 2026-03-23 → 2026-04-13 (+21d) | 2026-03-25 → 2026-04-15 (+21d) |  |  |  |
| 50 | **开发** |  | 2026-05-15 → 2026-06-26 (+42d) | 44d → 74d | 0% → 2% |  |
| 51 | 技术架构 |  |  |  | 0% → 15% |  |
| 52 | 基础数据 |  | 2026-04-06 → 2026-04-10 (+4d) | 10d → 14d |  |  |
| 56 | 生产填报 |  | 2026-05-15 → 2026-05-22 (+7d) | 8d → 13d |  |  |
| 57 | 品质管理 | 2026-03-24 → 2026-03-30 (+6d) | 2026-04-30 → 2026-05-15 (+15d) | 28d → 35d |  |  |
| 58 | 品质填报 | 2026-03-23 → 2026-04-13 (+21d) | 2026-03-23 → 2026-04-13 (+21d) |  |  |  |
| 68 | 现场硬件设备准备 | 2026-05-05 → 2026-05-11 (+6d) | 2026-07-10 → 2026-07-17 (+7d) | 49d → 50d |  |  |
| 69 | **UAT测试** | 2026-05-18 → 2026-06-29 (+42d) | 2026-07-17 → 2026-07-31 (+14d) | 45d → 25d |  |  |
| 70 | 系统管理员培训、问题解答和技术支持 | 2026-05-18 → 2026-06-29 (+42d) | 2026-05-18 → 2026-07-03 (+46d) | 1d → 5d |  |  |
| 71 | 单元模块、系统内测 | 2026-05-18 → 2026-06-29 (+42d) | 2026-07-10 → 2026-07-31 (+21d) | 40d → 25d |  |  |
| 72 | UAT问题跟进处理 | 2026-05-25 → 2026-06-29 (+35d) | 2026-07-17 → 2026-07-31 (+14d) | 40d → 25d |  |  |
| 73 | **培训** | 2026-07-13 → 2026-07-20 (+7d) | 2026-07-31 → 2026-08-07 (+7d) |  |  |  |
| 74 | 培训材料编写 | 2026-07-13 → 2026-07-20 (+7d) | 2026-07-24 → 2026-07-31 (+7d) |  |  |  |
| 76 | 系统培训 | 2026-07-27 → 2026-08-03 (+7d) | 2026-07-31 → 2026-08-07 (+7d) |  |  |  |
| 77 | **系统试运行** | 2026-07-13 → 2026-07-20 (+7d) | 2026-08-28 → 2026-09-04 (+7d) |  |  |  |
| 78 | 现场设备硬件确认 | 2026-07-13 → 2026-07-20 (+7d) | 2026-07-17 → 2026-07-24 (+7d) |  |  |  |
| 79 | 试运行环境搭建 | 2026-07-20 → 2026-07-27 (+7d) | 2026-07-24 → 2026-07-31 (+7d) |  |  |  |
| 80 | 试运行数据准备 | 2026-07-27 → 2026-08-03 (+7d) | 2026-07-31 → 2026-08-07 (+7d) |  |  |  |
| 81 | 系统试运行 | 2026-08-03 → 2026-08-10 (+7d) | 2026-08-28 → 2026-09-04 (+7d) |  |  |  |
| 82 | 功能优化 | 2026-08-03 → 2026-08-10 (+7d) | 2026-08-28 → 2026-09-04 (+7d) |  |  |  |
| 83 | **系统上线** | 2026-08-31 → 2026-08-24 (-7d) | 2026-10-23 → 2026-10-30 (+7d) | 40d → 50d |  |  |
| 86 | 正式上线 | 2026-08-31 → 2026-09-07 (+7d) | 2026-09-25 → 2026-10-09 (+14d) | 20d → 25d |  | 81 → none |
| 87 | 验收签字 | 2026-09-28 → 2026-10-12 (+14d) | 2026-10-23 → 2026-10-30 (+7d) | 20d → 15d |  | none → 86 |

## Version 5 (saved 2026-04-07)

Last finish stays 2026-10-30. Complete tasks 42 → 43.

Added:

| ID | Task | Duration | Start | Finish |
| --- | --- | --- | --- | --- |
| 31 | **追加需求设计** | 10d | 2026-03-30 | 2026-04-10 |
| 32 | 水电气汇报 | 5d | 2026-03-30 | 2026-04-03 |
| 33 | 新模式品质填报设计 | 10d | 2026-03-30 | 2026-04-10 |

Changed:

| ID | Task | Finish | Duration | Complete |
| --- | --- | --- | --- | --- |
| 17 | **蓝图设计方案输出** | 2025-12-31 → 2026-04-10 (+100d) | 21d → 93d | 100% → 91% |

## Version 6 (saved 2026-04-08)

Last finish stays 2026-10-30. Complete tasks 43 → 42.

Removed: 66 打印服务; 67 技术架构; 68 业务视图管理; 69 基础档案管理; 70 模版管理中心; 71 现场硬件设备准备

## Version 7 (saved 2026-04-20)

Last finish 2026-10-30 → 2027-04-30 (+182d).

Added:

| ID | Task | Duration | Start | Finish |
| --- | --- | --- | --- | --- |
| 85 | **南通** | 76d | 2026-09-28 | 2027-01-11 |
| 86 | 南通设备准备 | 1d | 2026-09-28 | 2026-09-28 |
| 87 | 南通上线 | 30d | 2026-12-01 | 2027-01-11 |
| 88 | 安福三期 | 35d | 2027-01-18 | 2027-03-05 |
| 89 | 越南 | 40d | 2027-03-08 | 2027-04-30 |
| 90 | 安福二期 | 1d | 2026-11-18 | 2026-11-18 |

Changed:

| ID | Task | Start | Finish | Duration | Predecessors |
| --- | --- | --- | --- | --- | --- |
| 50 | **建表** |  | 2026-04-15 → 2026-05-08 (+23d) | 32d → 49d |  |
| 52 | 品质填报建表 | 2026-04-13 → 2026-05-06 (+23d) | 2026-04-15 → 2026-05-08 (+23d) |  |  |
| 70 | **培训** | 2026-07-20 → 2026-08-10 (+21d) | 2026-08-07 → 2026-08-28 (+21d) |  |  |
| 71 | 培训材料编写 | 2026-07-20 → 2026-08-10 (+21d) | 2026-07-31 → 2026-08-21 (+21d) |  |  |
| 72 | 系统动员会 | 2026-08-03 → 2026-08-21 (+18d) | 2026-08-03 → 2026-08-21 (+18d) |  |  |
| 73 | 系统培训 | 2026-08-03 → 2026-08-24 (+21d) | 2026-08-07 → 2026-08-28 (+21d) |  |  |
| 74 | **系统试运行** | 2026-07-20 → 2026-08-10 (+21d) | 2026-09-04 → 2026-09-25 (+21d) |  |  |
| 75 | 现场设备硬件确认 | 2026-07-20 → 2026-08-10 (+21d) | 2026-07-24 → 2026-08-14 (+21d) |  |  |
| 76 | 试运行环境搭建 | 2026-07-27 → 2026-08-17 (+21d) | 2026-07-31 → 2026-08-21 (+21d) |  |  |
| 77 | 试运行数据准备 | 2026-08-03 → 2026-08-24 (+21d) | 2026-08-07 → 2026-08-28 (+21d) |  |  |
| 78 | 系统试运行 | 2026-08-10 → 2026-08-31 (+21d) | 2026-09-04 → 2026-09-25 (+21d) |  |  |
| 79 | 功能优化 | 2026-08-10 → 2026-08-31 (+21d) | 2026-09-04 → 2026-09-25 (+21d) |  |  |
| 80 | **系统上线** | 2026-08-24 → 2026-09-14 (+21d) | 2026-10-30 → 2026-11-06 (+7d) | 50d → 40d |  |
| 81 | 正式环境部署 | 2026-08-24 → 2026-09-14 (+21d) | 2026-08-28 → 2026-09-18 (+21d) |  |  |
| 82 | 正式环境数据准备 | 2026-08-31 → 2026-09-21 (+21d) | 2026-09-04 → 2026-09-25 (+21d) |  |  |
| 83 | 正式上线 | 2026-09-07 → 2026-09-28 (+21d) | 2026-10-09 → 2026-10-16 (+7d) | 25d → 15d | none → 78 |
| 84 | 验收签字 | 2026-10-12 → 2026-10-19 (+7d) | 2026-10-30 → 2026-11-06 (+7d) |  |  |

## Version 8 (saved 2026-04-22)

Last finish 2027-04-30 → 2027-05-10 (+10d).

Added:

| ID | Task | Duration | Start | Finish | Predecessors |
| --- | --- | --- | --- | --- | --- |
| 33 | 品质填报重新设计 | 10d | 2026-03-30 | 2026-04-10 |  |
| 67 | 系统管理员培训 | 5d | 2026-06-29 | 2026-07-03 |  |
| 87 | **系统试运行** | 30d | 2026-11-09 | 2026-12-18 |  |
| 88 | 现场设备硬件确认 | 5d | 2026-11-09 | 2026-11-13 |  |
| 89 | 试运行环境搭建 | 5d | 2026-11-09 | 2026-11-13 |  |
| 90 | 试运行数据准备 | 10d | 2026-11-09 | 2026-11-20 |  |
| 91 | 系统动员会 | 1d | 2026-11-20 | 2026-11-20 |  |
| 92 | 系统培训 | 5d | 2026-11-23 | 2026-11-27 | 90 |
| 93 | 系统试运行 | 15d | 2026-11-30 | 2026-12-18 | 92 |
| 94 | 系统针对性优化 | 15d | 2026-11-30 | 2026-12-18 |  |
| 95 | **正式上线** | 30d | 2026-12-07 | 2027-01-15 |  |
| 96 | 正式环境部署 | 5d | 2026-12-07 | 2026-12-11 |  |
| 97 | 正式环境数据准备 | 5d | 2026-12-14 | 2026-12-18 | 96 |
| 98 | 系统正式上线 | 20d | 2026-12-21 | 2027-01-15 | 93, 97 |
| 100 | 三期设备准备 | 30d | 2026-11-23 | 2027-01-01 |  |
| 101 | **系统试运行** | 30d | 2027-01-04 | 2027-02-12 |  |
| 102 | 现场设备硬件确认 | 5d | 2027-01-04 | 2027-01-08 |  |
| 103 | 试运行环境搭建 | 5d | 2027-01-04 | 2027-01-08 |  |
| 104 | 试运行数据准备 | 5d | 2027-01-11 | 2027-01-15 | 103 |
| 105 | 系统动员会 | 1d | 2027-01-08 | 2027-01-08 |  |
| 106 | 系统培训 | 5d | 2027-01-11 | 2027-01-15 |  |
| 107 | 系统试运行 | 20d | 2027-01-18 | 2027-02-12 | 104, 106 |
| 108 | 系统针对性优化 | 20d | 2027-01-18 | 2027-02-12 |  |
| 109 | **系统正式上线** | 30d | 2027-01-25 | 2027-03-05 |  |
| 110 | 正式环境部署 | 5d | 2027-01-25 | 2027-01-29 |  |
| 111 | 正式环境数据准备 | 5d | 2027-02-01 | 2027-02-05 | 110 |
| 112 | 系统正式上线 | 15d | 2027-02-15 | 2027-03-05 | 107 |
| 114 | 越南设备准备 | 30d | 2027-01-11 | 2027-02-19 |  |
| 115 | 越南版本准备 | 40d | 2027-01-11 | 2027-03-05 |  |
| 116 | **试运行** | 35d | 2027-02-22 | 2027-04-09 |  |
| 117 | 现场设备硬件确认 | 5d | 2027-02-22 | 2027-02-26 |  |
| 118 | 试运行环境搭建 | 5d | 2027-02-22 | 2027-02-26 |  |
| 119 | 试运行数据准备 | 5d | 2027-03-01 | 2027-03-05 | 118 |
| 120 | 系统动员会 | 1d | 2027-03-05 | 2027-03-05 |  |
| 121 | 系统培训 | 5d | 2027-03-08 | 2027-03-12 | 119, 120 |
| 122 | 系统试运行 | 20d | 2027-03-15 | 2027-04-09 | 121 |
| 123 | 系统针对性优化 | 20d | 2027-03-15 | 2027-04-09 |  |
| 124 | **系统上线** | 25d | 2027-03-29 | 2027-04-30 |  |
| 125 | 正式环境部署 | 5d | 2027-03-29 | 2027-04-02 |  |
| 126 | 正式环境数据准备 | 10d | 2027-03-29 | 2027-04-09 |  |
| 127 | 系统上线 | 15d | 2027-04-12 | 2027-04-30 |  |

Removed: 33 新模式品质填报设计; 67 系统管理员培训、问题解答和技术支持; 87 南通上线

Changed:

| ID | Task | Start | Finish | Duration | Predecessors |
| --- | --- | --- | --- | --- | --- |
| 61 | 品质填报 | 2026-04-13 → 2026-05-11 (+28d) | 2026-04-13 → 2026-05-29 (+46d) | 1d → 15d |  |
| 74 | **系统试运行** |  | 2026-09-25 → 2026-09-18 (-7d) | 35d → 30d |  |
| 77 | 试运行数据准备 | 2026-08-24 → 2026-08-17 (-7d) |  | 5d → 10d |  |
| 78 | 系统试运行 |  | 2026-09-25 → 2026-09-18 (-7d) | 20d → 15d |  |
| 79 | 功能优化 |  | 2026-09-25 → 2026-09-18 (-7d) | 20d → 15d |  |
| 80 | **系统上线** | 2026-09-14 → 2026-09-07 (-7d) | 2026-11-06 → 2026-10-30 (-7d) |  |  |
| 81 | 正式环境部署 | 2026-09-14 → 2026-09-07 (-7d) | 2026-09-18 → 2026-09-11 (-7d) |  |  |
| 82 | 正式环境数据准备 | 2026-09-21 → 2026-09-14 (-7d) | 2026-09-25 → 2026-09-18 (-7d) |  | none → 81 |
| 83 | 正式上线 | 2026-09-28 → 2026-09-21 (-7d) | 2026-10-16 → 2026-10-09 (-7d) |  | 78 → 78, 82 |
| 84 | 验收签字 | 2026-10-19 → 2026-10-12 (-7d) | 2026-11-06 → 2026-10-30 (-7d) |  |  |
| 85 | **南通** | 2026-09-28 → 2026-09-14 (-14d) | 2027-01-11 → 2027-01-15 (+4d) | 76d → 90d |  |
| 86 | 南通设备准备 | 2026-09-28 → 2026-09-14 (-14d) | 2026-09-28 → 2026-11-06 (+39d) | 1d → 40d |  |
| 99 | **安福三期** | 2027-01-18 → 2026-11-23 (-56d) |  | 35d → 75d |  |
| 113 | **越南** | 2027-03-08 → 2027-01-11 (-56d) |  | 40d → 80d |  |
| 128 | 安福二期 | 2026-11-18 → 2027-05-10 (+173d) | 2026-11-18 → 2027-05-10 (+173d) |  |  |

## Version 9 (saved 2026-05-11)

Last finish stays 2027-05-10. Complete tasks 42 → 45.

Changed:

| ID | Task | Start | Finish | Duration | Complete | Predecessors |
| --- | --- | --- | --- | --- | --- | --- |
| 17 | **蓝图设计方案输出** |  |  |  | 91% → 100% |  |
| 31 | **追加需求设计** |  |  |  | 67% → 100% |  |
| 33 | 品质填报重新设计 |  |  |  | 50% → 100% |  |
| 49 | **系统开发** |  |  |  | 6% → 50% |  |
| 50 | **建表** |  | 2026-05-08 → 2026-05-20 (+12d) | 49d → 57d |  |  |
| 52 | 品质填报建表 | 2026-05-06 → 2026-05-18 (+12d) | 2026-05-08 → 2026-05-20 (+12d) |  |  |  |
| 53 | **开发** |  |  |  | 2% → 49% |  |
| 54 | 技术架构 |  |  |  | 15% → 100% |  |
| 55 | 基础数据 |  | 2026-04-10 → 2026-06-01 (+52d) | 14d → 50d | 0% → 80% |  |
| 56 | 销售订单管理 |  | 2026-04-13 → 2026-06-01 (+49d) | 15d → 50d | 0% → 40% |  |
| 57 | 计划管理 |  |  |  | 0% → 100% |  |
| 58 | 生产管理 |  | 2026-04-30 → 2026-05-29 (+29d) | 28d → 49d | 0% → 10% |  |
| 59 | 生产填报 |  | 2026-05-22 → 2026-05-29 (+7d) | 13d → 18d |  |  |
| 60 | 品质管理 |  | 2026-05-15 → 2026-05-29 (+14d) | 35d → 45d | 0% → 30% |  |
| 61 | 品质填报 | 2026-05-11 → 2026-05-18 (+7d) |  | 15d → 10d |  |  |
| 62 | 生产结果 |  | 2026-04-13 → 2026-05-29 (+46d) | 15d → 49d | 0% → 80% |  |
| 63 | 推送清单 |  | 2026-04-27 → 2026-05-29 (+32d) | 11d → 35d | 0% → 80% |  |
| 64 | 库存管理 |  | 2026-04-17 → 2026-05-29 (+42d) | 5d → 35d | 0% → 50% |  |
| 68 | 单元模块、系统内测 |  |  |  |  | 49 → none |

## Version 10 (saved 2026-05-15)

Last finish stays 2027-05-10.

Changed:

| ID | Task | Complete |
| --- | --- | --- |
| 49 | **系统开发** | 50% → 52% |
| 53 | **开发** | 49% → 52% |

## Version 11 (saved 2026-05-25)

Last finish stays 2027-05-10.

Changed:

| ID | Task | Start | Finish | Duration | Complete |
| --- | --- | --- | --- | --- | --- |
| 53 | **开发** |  |  |  | 52% → 51% |
| 61 | 品质填报 | 2026-05-18 → 2026-05-25 (+7d) | 2026-05-29 → 2026-06-12 (+14d) | 10d → 15d |  |

## Version 12 (saved 2026-06-24)

Last finish stays 2027-05-10.

Changed:

| ID | Task | Start | Finish | Duration |
| --- | --- | --- | --- | --- |
| 113 | **越南** | 2027-01-11 → 2026-12-28 (-14d) |  | 80d → 90d |
| 115 | 越南版本准备 | 2027-01-11 → 2026-12-28 (-14d) | 2027-03-05 → 2027-02-19 (-14d) |  |

## Version 13 (saved 2026-06-29)

Last finish stays 2027-05-10. Complete tasks 45 → 55.

Changed:

| ID | Task | Start | Finish | Duration | Complete |
| --- | --- | --- | --- | --- | --- |
| 49 | **系统开发** |  |  |  | 52% → 99% |
| 50 | **建表** |  |  |  | 75% → 100% |
| 52 | 品质填报建表 |  |  |  | 0% → 100% |
| 53 | **开发** |  |  |  | 51% → 99% |
| 55 | 基础数据 |  |  |  | 80% → 100% |
| 56 | 销售订单管理 |  |  |  | 40% → 100% |
| 58 | 生产管理 |  |  |  | 10% → 100% |
| 59 | 生产填报 |  |  |  | 0% → 100% |
| 60 | 品质管理 |  |  |  | 30% → 100% |
| 61 | 品质填报 |  |  |  | 0% → 100% |
| 62 | 生产结果 |  |  |  | 80% → 100% |
| 63 | 推送清单 |  |  |  | 80% → 100% |
| 64 | 库存管理 |  |  |  | 50% → 100% |
| 65 | 开发集成测试 |  |  |  | 0% → 80% |
| 74 | **系统试运行** |  | 2026-09-18 → 2026-09-11 (-7d) | 30d → 25d |  |
| 78 | 系统试运行 |  | 2026-09-18 → 2026-09-11 (-7d) | 15d → 10d |  |
| 79 | 功能优化 |  | 2026-09-18 → 2026-09-11 (-7d) | 15d → 10d |  |
| 80 | **系统上线** | 2026-09-07 → 2026-08-31 (-7d) | 2026-10-30 → 2026-10-23 (-7d) |  |  |
| 81 | 正式环境部署 | 2026-09-07 → 2026-08-31 (-7d) | 2026-09-11 → 2026-09-04 (-7d) |  |  |
| 82 | 正式环境数据准备 | 2026-09-14 → 2026-09-07 (-7d) | 2026-09-18 → 2026-09-11 (-7d) |  |  |
| 83 | 正式上线 | 2026-09-21 → 2026-09-14 (-7d) | 2026-10-09 → 2026-10-02 (-7d) |  |  |
| 84 | 验收签字 | 2026-10-12 → 2026-10-05 (-7d) | 2026-10-30 → 2026-10-23 (-7d) |  |  |

## Version 14 (saved 2026-07-13)

Last finish stays 2027-05-10.

Removed: 67 系统管理员培训

## Version 15 (saved 2026-08-03)

Last finish stays 2027-05-10. Complete tasks 55 → 56.

Changed:

| ID | Task | Start | Finish | Duration | Complete | Predecessors |
| --- | --- | --- | --- | --- | --- | --- |
| 49 | **系统开发** |  |  |  | 99% → 100% |  |
| 53 | **开发** |  |  |  | 99% → 100% |  |
| 65 | 开发集成测试 |  |  |  | 80% → 100% |  |
| 66 | **UAT测试** |  | 2026-07-31 → 2026-08-14 (+14d) | 25d → 35d | 0% → 70% |  |
| 67 | 单元模块、系统内测 |  | 2026-07-31 → 2026-08-14 (+14d) | 25d → 35d | 0% → 70% |  |
| 68 | UAT问题跟进处理 |  | 2026-07-31 → 2026-08-14 (+14d) | 25d → 35d | 0% → 70% |  |
| 69 | **培训** | 2026-08-10 → 2026-08-17 (+7d) |  | 15d → 10d |  |  |
| 70 | 培训材料编写 | 2026-08-10 → 2026-08-17 (+7d) |  | 10d → 5d |  |  |
| 72 | 系统培训 |  |  |  |  | 70 → none |
| 73 | **系统试运行** | 2026-08-10 → 2026-08-17 (+7d) |  | 25d → 20d |  |  |
| 74 | 现场设备硬件确认 | 2026-08-10 → 2026-08-24 (+14d) | 2026-08-14 → 2026-08-28 (+14d) |  |  |  |
| 77 | 系统试运行 |  |  |  |  | 72 → none |
| 82 | 正式上线 |  |  |  |  | 77, 81 → 77 |
| 84 | **南通** | 2026-09-14 → 2026-09-21 (+7d) |  | 90d → 85d |  |  |
| 85 | 南通设备准备 | 2026-09-14 → 2026-09-21 (+7d) |  | 40d → 35d |  |  |
